# Chip Design

Schedule from MS Project, 2015-05-14 to 2016-05-04, scheduled back from the finish, A marks actual dates.

## Calendars

- Standard: Mon-Fri 08:00-12:00, 13:00-17:00; Sat-Sun off.

## Resources

| Resource |
| --- |
| Zach Nelson |
| Kevin Cao |
| Dhruvit Naik |
| Whitley Forman |
| Julie Swift |
| Dr |
| Ian Patel |

## Schedule

| ID | WBS | Task | Type | Duration | Start | Finish | Predecessors | Complete | Remaining | Actual finish | Constraint | Resources | Work | Actual work |
| --- | --- | --- | --- | --- | --- | --- | --- | --- | --- | --- | --- | --- | --- | --- |
| 1 | 1 | **System Design** |  | 88d | 2015-05-14 A | 2015-09-14 |  | 100% |  | 2015-09-16 | as late as possible | Dhruvit Naik; Julie Swift; Kevin Cao; Whitley Forman; Zach Nelson | 9288h | 9288h |
| 2 | 1.1 | General Planning | manual | 26d | 2015-05-14 A | 2015-06-18 A |  | 100% |  |  |  | Dhruvit Naik; Julie Swift; Kevin Cao; Whitley Forman; Zach Nelson | 1040h | 1040h |
| 3 | 1.2 | Complete I2S In Document | manual | 60d | 2015-06-18 A | 2015-09-09 A |  | 100% |  |  |  | Zach Nelson | 480h | 480h |
| 4 | 1.3 | Complete I2S Out Document | manual | 44d | 2015-07-11 A | 2015-09-09 A |  | 100% |  |  |  | Kevin Cao | 352h | 352h |
| 5 | 1.4 | Complete Filter Document | manual | 60d | 2015-06-18 A | 2015-09-09 A |  | 100% |  |  |  | Dhruvit Naik | 480h | 480h |
| 6 | 1.5 | Complete I2C Document | manual | 60d | 2015-06-18 A | 2015-09-09 A |  | 100% |  |  |  | Whitley Forman | 480h | 480h |
| 7 | 1.6 | Complete Register Document | manual | 60d | 2015-06-18 A | 2015-09-09 A |  | 100% |  |  |  | Julie Swift | 480h | 480h |
| 8 | 1.7 | Finish System Design | milestone, manual | 0d | 2015-09-09 A | 2015-09-09 A |  | 100% |  |  |  | Dhruvit Naik; Julie Swift; Kevin Cao; Whitley Forman; Zach Nelson |  |  |
| 9 | 1.8 | Document System in CORE | manual | 60d | 2015-06-18 A | 2015-09-09 A |  | 100% |  |  |  | Dhruvit Naik; Julie Swift; Kevin Cao; Whitley Forman; Zach Nelson | 2400h | 2400h |
| 10 | 1.9 | RTS/RTR and XFC Protocols | manual | 7d | 2015-09-08 A | 2015-09-16 A |  | 100% |  |  | as late as possible | Zach Nelson | 56h | 56h |
| 11 | 2 | Create a Detailed Schedule | manual | 9d | 2015-09-02 A | 2015-09-14 A |  | 100% |  |  |  | Zach Nelson | 72h | 72h |
| 12 | 3 | Install Microsoft Project | manual | 9d | 2015-09-02 A | 2015-09-14 A |  | 100% |  |  | as late as possible | Zach Nelson | 72h | 72h |
| 13 | 4 | **Install EDA Tools** |  | 26d | 2015-09-02 A | 2015-10-07 |  | 50% | 13d |  | as late as possible | Dhruvit Naik; Julie Swift | 832h | 432h |
| 14 | 4.1 | Determine EDA Requriments | manual | 4d | 2015-09-02 A | 2015-09-06 A |  | 100% |  |  |  | Dhruvit Naik; Julie Swift | 64h | 64h |
| 15 | 4.2 | Install OS | manual | 13d | 2015-09-09 A | 2015-09-25 | 14 | 69% | 4d |  |  | Dhruvit Naik; Julie Swift | 208h | 144h |
| 16 | 4.3 | Install EDA Tool | manual | 2d | 2015-09-28 | 2015-09-29 | 15 |  |  |  |  | Dhruvit Naik; Julie Swift | 32h |  |
| 17 | 4.4 | Create a Simple Test Case | manual | 5d | 2015-09-29 | 2015-10-05 | 16 |  |  |  |  | Dhruvit Naik; Julie Swift | 80h |  |
| 18 | 4.5 | Place and Route Test | manual | 2d | 2015-10-06 | 2015-10-07 | 17 |  |  |  |  | Dhruvit Naik; Julie Swift | 32h |  |
| 19 | 4.6 | Finish EDA Installation | milestone, manual | 0d | 2015-10-07 | 2015-10-07 |  |  |  |  |  | Dhruvit Naik; Julie Swift |  |  |
| 20 | 5 | Create Web Page | manual | 10d | 2015-09-21 A | 2015-10-02 A |  | 100% |  |  | as late as possible | Kevin Cao | 80h | 80h |
| 21 | 6 | **RTL Design and Testing** |  | 38d | 2015-09-10 A | 2015-10-31 | 1 | 70% | 11.4d |  | as late as possible | Dhruvit Naik; Julie Swift; Kevin Cao; Whitley Forman; Zach Nelson | 6456h | 2903.39h |
| 22 | 6.1 | **Create i2si.v** |  | 38d | 2015-09-10 A | 2015-10-31 |  | 71% | 11.02d |  | as late as possible | Kevin Cao; Zach Nelson | 1176h | 399.39h |
| 23 | 6.1.1 | Create and Test i2si_fifo.v | manual | 7d | 2015-09-10 A | 2015-09-18 A |  | 100% |  |  |  | Zach Nelson | 56h | 56h |
| 24 | 6.1.2 | Create and Test i2si_deserializer.v | manual | 11d | 2015-09-16 A | 2015-09-30 A |  | 100% |  |  |  | Kevin Cao | 88h | 88h |
| 25 | 6.1.3 | Create and Test i2si_bist.v | manual | 11d | 2015-09-16 A | 2015-09-30 A |  | 100% |  |  |  | Zach Nelson | 88h | 88h |
| 26 | 6.1.4 | Create i2si.v Top-Level | manual | 13d | 2015-10-05 A | 2015-10-21 | 23, 24, 25 | 50% | 6.5d |  | as late as possible | Kevin Cao; Zach Nelson | 208h | 104h |
| 27 | 6.1.5 | Test i2si.v | manual | 8d | 2015-10-22 | 2015-10-31 | 26 |  |  |  | as late as possible | Kevin Cao; Zach Nelson | 128h |  |

| ID | WBS | Task | Type | Duration | Start | Finish | Predecessors | Complete | Remaining | Actual start | Constraint | Resources | Work | Actual work |
| --- | --- | --- | --- | --- | --- | --- | --- | --- | --- | --- | --- | --- | --- | --- |
| 28 | 6.2 | **Create i2so.v** |  | 33d | 2015-09-10 A | 2015-10-24 |  | 67% | 10.88d |  | as late as possible | Kevin Cao; Zach Nelson | 1024h | 264h |
| 29 | 6.2.1 | Create and Test i2so_fifo.v | manual | 10d | 2015-09-10 A | 2015-09-23 A |  | 100% |  |  |  | Zach Nelson | 80h | 80h |
| 30 | 6.2.2 | Create and Test i2so_serializer.v | manual | 16d | 2015-09-16 A | 2015-10-07 A |  | 100% |  |  | finish no later than 2015-10-07 | Kevin Cao | 128h | 128h |
| 31 | 6.2.3 | Create i2so.v Top-Level | manual | 10d | 2015-10-08 A | 2015-10-27 | 29, 30 | 35% | 6.5d |  | as late as possible | Kevin Cao; Zach Nelson | 160h | 56h |
| 32 | 6.2.4 | Test i2so.v | manual | 8d | 2015-10-22 | 2015-10-31 | 31 |  |  |  | as late as possible | Kevin Cao; Zach Nelson | 128h |  |
| 33 | 6.3 | **Create filter.v** |  | 37d | 2015-09-11 | 2015-10-31 |  | 72% | 10.24d | 2015-09-14 | as late as possible | Dhruvit Naik | 744h | 324h |
| 34 | 6.3.1 | Create and Test filter_convolution.v | manual | 11d | 2015-09-14 A | 2015-09-28 A |  | 100% |  |  | as late as possible | Dhruvit Naik | 88h | 88h |
| 35 | 6.3.2 | Create and Test filter_accumulator.v | manual | 11d | 2015-09-18 A | 2015-10-02 A |  | 100% |  |  | as late as possible | Dhruvit Naik | 88h | 88h |
| 36 | 6.3.3 | Create and Test filter_fifo.v | manual | 11d | 2015-09-23 A | 2015-10-07 A |  | 100% |  |  | as late as possible | Dhruvit Naik | 88h | 88h |
| 37 | 6.3.4 | Create and Test filter_round_shift_clip.v | manual | 11d | 2015-10-02 A | 2015-10-16 |  | 68% | 3.5d |  | as late as possible | Dhruvit Naik | 88h | 60h |
| 38 | 6.3.5 | Create filter.v Top-Level | manual | 4d | 2015-10-17 | 2015-10-21 | 34, 35, 36, 37 |  |  |  | as late as possible | Dhruvit Naik | 32h |  |
| 39 | 6.3.6 | Test filter.v | manual | 8d | 2015-10-22 | 2015-10-31 |  |  |  |  | as late as possible | Dhruvit Naik | 64h |  |
| 40 | 6.4 | **Create register.v** |  | 37d | 2015-09-10 A | 2015-10-30 |  | 75% | 9.4d |  | as late as possible | Julie Swift | 800h | 376h |
| 41 | 6.4.1 | Create and Test register_trig_gen.v | manual | 25d | 2015-09-10 A | 2015-10-14 |  | 94% | 1.5d |  | as late as possible | Julie Swift | 200h | 188h |
| 42 | 6.4.2 | Create register.v Top-Level | manual | 25d | 2015-09-10 A | 2015-10-14 |  | 94% | 1.5d |  | as late as possible | Julie Swift | 200h | 188h |
| 43 | 6.4.3 | Test register.v | manual | 13d | 2015-10-15 | 2015-10-31 |  |  |  |  | as late as possible | Julie Swift | 104h |  |
| 44 | 6.5 | **Create i2c_slave.v** |  | 37d | 2015-09-10 A | 2015-10-30 |  | 70% | 11.01d |  | as late as possible | Whitley Forman | 928h | 444h |
| 45 | 6.5.1 | Create and Test i2c_slave_deserializer.v | manual | 15d | 2015-09-10 A | 2015-09-30 A |  | 100% |  |  | as late as possible | Whitley Forman | 120h | 120h |
| 46 | 6.5.2 | Create and Test i2c_slave_sequencer.v | manual | 20d | 2015-09-17 A | 2015-10-14 |  | 93% | 1.5d |  | as late as possible | Whitley Forman | 160h | 148h |
| 47 | 6.5.3 | Create and Test i2c_slave_writetoreg.v | manual | 20d | 2015-09-17 A | 2015-10-14 |  | 93% | 1.5d |  | as late as possible | Whitley Forman | 160h | 148h |
| 48 | 6.5.4 | Create and Test i2c_slave_serializer.v | manual | 10d | 2015-10-08 A | 2015-10-23 |  | 35% | 6.5d |  | as late as possible | Whitley Forman | 80h | 28h |
| 49 | 6.5.5 | Create i2c_slave.v Top Level | manual | 9d | 2015-10-14 | 2015-10-26 |  |  |  |  | as late as possible | Whitley Forman | 72h |  |
| 50 | 6.5.6 | Test i2c_slave.v | manual | 5d | 2015-10-27 | 2015-10-31 | 48, 49 |  |  |  | as late as possible | Whitley Forman | 40h |  |
| 51 | 6.6 | Create chip.v | manual | 33d | 2015-09-16 A | 2015-10-30 |  | 59% | 13.5d |  |  | Zach Nelson | 264h | 156h |
| 52 | 6.7 | Finish RTL Design | milestone, manual | 0d | 2015-10-30 | 2015-10-30 |  |  |  |  |  | Dhruvit Naik; Julie Swift; Kevin Cao; Whitley Forman; Zach Nelson |  |  |
| 53 | 7 | Create Text Fixtures | manual | 23d | 2015-09-30 A | 2015-10-30 |  | 20% | 18.4d |  | as late as possible |  |  |  |
| 54 | 8 | Integration Testing | manual | 8d | 2015-11-01 A | 2015-11-10 | 52 | 10% | 7.2d |  | as late as possible |  |  |  |
| 55 | 9 | Logic Synthesis | manual | 8d | 2015-11-01 A | 2015-11-10 | 21 | 10% | 7.2d |  | finish no later than 2015-11-10 |  |  |  |
| 56 | 10 | Floor Planning | manual | 6d | 2015-11-11 | 2015-11-18 | 55 |  |  |  | as late as possible |  |  |  |
| 57 | 11 | Place and Route Gates | manual | 5d | 2015-11-19 | 2015-11-25 | 56 |  |  |  | finish no later than 2015-11-25 |  |  |  |

| ID | WBS | Task | Type | Duration | Start | Finish | Predecessors | Complete | Remaining | Constraint | Resources | Work | Actual work |
| --- | --- | --- | --- | --- | --- | --- | --- | --- | --- | --- | --- | --- | --- |
| 58 | 12 | **Board Design** |  | 26d | 2015-10-21 | 2015-11-25 |  |  |  | as late as possible |  |  |  |
| 59 | 12.1 | Research FPGA's | manual | 5d | 2015-10-21 | 2015-10-27 |  |  |  | as late as possible |  |  |  |
| 60 | 12.2 | Purchase FPGA | manual | 2d | 2015-10-28 | 2015-10-29 | 59 |  |  |  |  |  |  |
| 61 | 12.3 | Write Microcontroller Code | manual | 16d | 2015-10-28 | 2015-11-18 |  |  |  | as late as possible |  |  |  |
| 62 | 13 | Have a Functional FPGA | milestone, manual | 0d | 2015-12-02 | 2015-12-02 |  |  |  |  |  |  |  |
| 63 | 14 | Write Final Report and Presentation | manual | 5d | 2015-11-26 A | 2015-12-02 A |  | 100% |  | as late as possible | Dhruvit Naik; Julie Swift; Kevin Cao; Whitley Forman; Zach Nelson | 200h | 200h |
| 64 | 15 | PSoC for I2S Stream | manual | 51d | 2015-11-18 A | 2016-01-27 |  | 5% | 48.45d | as late as possible | Ian Patel | 408h | 20.4h |
| 65 | 16 | Verification | manual | 29d | 2016-01-20 | 2016-02-29 |  |  |  | finish no later than 2016-02-29 |  |  |  |
| 66 | 17 | Prepare for Fabrication | manual | 28d | 2016-01-21 | 2016-02-29 |  |  |  | as late as possible |  |  |  |
| 67 | 18 | MOSIS Fabrication Deadline | milestone, manual | 0d | 2016-03-06 | 2016-03-06 |  |  |  | as late as possible | Dhruvit Naik; Julie Swift; Kevin Cao; Whitley Forman; Zach Nelson |  |  |
| 68 | 19 | Additional FPGA Testing | manual | 33d | 2016-03-07 | 2016-04-20 |  |  |  | as late as possible |  |  |  |
| 69 | 20 | Final Documentation | manual | 9d | 2016-04-21 | 2016-05-03 | 68 |  |  | as late as possible |  |  |  |
| 70 | 21 | Final Presentation and Report II | milestone, manual | 0d | 2016-05-04 | 2016-05-04 |  |  |  | as late as possible |  |  |  |
